How a schedule from MS Project changed from version to version. A marks actual dates.

## Version 1 (saved 2021-03-15)

Note of the change: Economics part

| ID | Task | Duration | Start | Finish | Predecessors | Total float | Constraint |
| --- | --- | --- | --- | --- | --- | --- | --- |
| 1 | Сбор требований | 10d | 2021-01-01 | 2021-01-14 |  | 0d | start no earlier than 2021-01-01 |
| 2 | Разработка и согласование ТЗ | 10d | 2021-01-15 | 2021-01-28 | 1 | 0d |  |
| 3 | Разработка технического проекта | 4d | 2021-01-29 | 2021-02-03 | 2 | 0d |  |
| 4 | Разработка моделей бизнес-процессов | 7d | 2021-02-04 | 2021-02-12 | 3 | 0d |  |
| 5 | Проектирование интерфейсов | 5d | 2021-02-15 | 2021-02-19 | 4 | 77d |  |
| 6 | Проектирование иерархии пользовательских интерфейсов | 2d | 2021-02-22 | 2021-02-23 | 5 | 77d |  |
| 7 | Проектирование архитектуры серверной части | 5d | 2021-02-15 | 2021-02-19 | 4 | 0d |  |
| 8 | Определение методов WEB API и их сигнатур | 2d | 2021-02-22 | 2021-02-23 | 7 | 0d |  |
| 9 | Разработка тестов для серверной части | 10d | 2021-02-24 | 2021-03-09 | 8 | 0d |  |
| 10 | Разработка тестов для клиентской части | 10d | 2021-03-10 | 2021-03-23 | 9 | 0d |  |
| 11 | Разработка серверной части | 20d | 2021-03-10 | 2021-04-06 | 9 | 15d |  |
| 12 | Разработка клиентской части | 25d | 2021-03-24 | 2021-04-27 | 10 | 0d |  |
| 13 | Тестирование серверной части | 10d | 2021-04-07 | 2021-04-20 | 11 | 30d |  |
| 14 | Тестирование взаимодействия серверной части и клиентской части | 5d | 2021-04-28 | 2021-05-04 | 12, 11 | 0d |  |
| 15 | Тестирование работы клиентской части | 10d | 2021-05-05 | 2021-05-18 | 14 | 0d |  |
| 16 | Кроссбраузерное тестирование интерфейсов | 10d | 2021-05-19 | 2021-06-01 | 15 | 0d |  |
| 17 | Разработка пользовательской документации | 4d | 2021-06-02 | 2021-06-07 | 16, 13 | 0d |  |
| 18 | Внедрение ПО | 3d | 2021-06-08 | 2021-06-10 | 17 | 0d |  |

## Version 2 (saved 2021-03-18)

Note of the change: Economics part

Last finish 2021-06-10 → 2021-06-07 (-3d).

Changed:

| ID | Task | Start | Finish | Duration | Total float | Other |
| --- | --- | --- | --- | --- | --- | --- |
| 9 | Разработка тестов для серверной части |  | 2021-03-09 → 2021-03-02 (-7d) | 10d → 5d |  |  |
| 10 | Разработка тестов для клиентской части | 2021-03-10 → 2021-03-03 (-7d) | 2021-03-23 → 2021-03-09 (-14d) | 10d → 5d |  |  |
| 11 | Разработка серверной части | 2021-03-10 → 2021-03-03 (-7d) | 2021-04-06 → 2021-03-30 (-7d) |  | 15d → 10d | resources Менеджер проекта [15%]; Backend-разработчик → Менеджер проекта [20%]; Backend-разработчик |
| 12 | Разработка клиентской части | 2021-03-24 → 2021-03-10 (-14d) | 2021-04-27 → 2021-04-13 (-14d) |  |  | resources Менеджер проекта [15%]; Frontend-разработчик → Менеджер проекта [20%]; Frontend-разработчик |
| 13 | Тестирование серверной части | 2021-04-07 → 2021-03-31 (-7d) | 2021-04-20 → 2021-04-13 (-7d) |  | 30d → 25d | resources Менеджер проекта [15%]; Тестировщик; Backend-разработчик [60%] → Менеджер проекта [20%]; Тестировщик; Backend-разработчик [60%] |
| 14 | Тестирование взаимодействия серверной части и клиентской части | 2021-04-28 → 2021-04-14 (-14d) | 2021-05-04 → 2021-04-20 (-14d) |  |  |  |
| 15 | Тестирование работы клиентской части | 2021-05-05 → 2021-04-21 (-14d) | 2021-05-18 → 2021-05-04 (-14d) |  |  |  |
| 16 | Кроссбраузерное тестирование интерфейсов | 2021-05-19 → 2021-05-05 (-14d) | 2021-06-01 → 2021-05-18 (-14d) |  |  | resources Менеджер проекта [20%]; Тестировщик → Менеджер проекта [20%]; Тестировщик; Frontend-разработчик [60%] |
| 17 | Разработка пользовательской документации | 2021-06-02 → 2021-05-19 (-14d) | 2021-06-07 → 2021-05-24 (-14d) |  |  |  |
| 18 | Внедрение ПО | 2021-06-08 → 2021-05-25 (-14d) | 2021-06-10 → 2021-06-07 (-3d) | 3d → 10d |  |  |
